# 教育机构频道

Schedule from MS Project, 2012-05-07 to 2012-06-21.

## Calendars

- 标准: Mon-Fri 08:00-12:00, 13:00-17:00; Sat-Sun off.

## Resources

| Resource |
| --- |
| 杨代盟 |
| 朱林 |

## Schedule

| ID | WBS | Task | Duration | Start | Finish | Predecessors | Total slack | Free slack | Constraint | Resources | Work |
| --- | --- | --- | --- | --- | --- | --- | --- | --- | --- | --- | --- |
| 1 | 1 | **教育机构频道** | 26d? | 2012-05-07 | 2012-06-11 |  | 0d |  | start no earlier than 2012-05-07 |  | 610.4h |
| 2 | 1.1 | **业务组件设计实现** | 9.6d | 2012-05-07 | 2012-05-18 |  | 0d |  |  |  | 74.4h |
| 3 | 1.1.1 | 地区 | 0.2d | 2012-05-07 | 2012-05-07 |  | 0d |  | start no earlier than 2012-05-07 | 杨代盟 | 1.6h |
| 4 | 1.1.2 | 教育机构 | 0.4d | 2012-05-07 | 2012-05-07 | 3 | 0d |  | start no earlier than 2012-05-07 | 杨代盟 | 3.2h |
| 5 | 1.1.3 | 课程 | 0.1d | 2012-05-07 | 2012-05-07 | 4 | 0d |  | start no earlier than 2012-05-07 | 杨代盟 | 0.8h |
| 6 | 1.1.4 | 班级 | 0.2d | 2012-05-08 | 2012-05-08 | 5 | 0d |  | start no earlier than 2012-05-07 | 杨代盟 | 1.6h |
| 7 | 1.1.5 | 学费类型 | 1d | 2012-05-08 | 2012-05-09 | 6 | 0d |  | start no earlier than 2012-05-07 | 杨代盟 | 8h |
| 8 | 1.1.6 | 学生档案 | 1d | 2012-05-09 | 2012-05-10 | 7 | 0d |  | start no earlier than 2012-05-08 | 杨代盟 | 8h |
| 9 | 1.1.7 | 学生考勤 | 0.5d | 2012-05-10 | 2012-05-10 | 8 | 0d |  | start no earlier than 2012-05-09 | 杨代盟 | 4h |
| 10 | 1.1.8 | 教师 | 0.2d | 2012-05-10 | 2012-05-10 | 9 | 0d |  | start no earlier than 2012-05-10 | 杨代盟 | 1.6h |
| 11 | 1.1.9 | 任课信息 | 0.2d | 2012-05-10 | 2012-05-11 | 10 | 0d |  | start no earlier than 2012-05-10 | 杨代盟 | 1.6h |
| 12 | 1.1.10 | 权限 | 0.5d | 2012-05-11 | 2012-05-11 | 11 | 0d |  | start no earlier than 2012-05-10 | 杨代盟 | 4h |
| 13 | 1.1.11 | 教案 | 1d | 2012-05-11 | 2012-05-14 | 12 | 0d |  | start no earlier than 2012-05-11 | 杨代盟 | 8h |
| 14 | 1.1.12 | 教学笔记 | 0.5d | 2012-05-14 | 2012-05-15 | 13 | 0d |  | start no earlier than 2012-05-14 | 杨代盟 | 4h |
| 15 | 1.1.13 | 学业评估 | 0.5d | 2012-05-15 | 2012-05-15 | 14 | 0d |  | start no earlier than 2012-05-14 | 杨代盟 | 4h |
| 16 | 1.1.14 | 学费 | 2d | 2012-05-15 | 2012-05-17 | 15 | 0d |  | start no earlier than 2012-05-15 | 杨代盟 | 16h |
| 17 | 1.1.15 | 招生培训 | 0.3d | 2012-05-17 | 2012-05-17 | 16 | 0d |  | start no earlier than 2012-05-17 | 杨代盟 | 2.4h |
| 18 | 1.1.16 | 报名申请表 | 0.2d | 2012-05-17 | 2012-05-18 | 17 | 0d |  | start no earlier than 2012-05-17 | 杨代盟 | 1.6h |
| 19 | 1.1.17 | 校历 | 0.2d | 2012-05-18 | 2012-05-18 | 18 | 0d |  | start no earlier than 2012-05-17 | 杨代盟 | 1.6h |
| 20 | 1.1.18 | 食谱 | 0.3d | 2012-05-18 | 2012-05-18 | 19 | 0d |  | start no earlier than 2012-05-18 | 杨代盟 | 2.4h |
| 21 | 1.2 | **教育机构导航** | 4d? | 2012-05-08 | 2012-05-11 | 3, 4 | 7.6d | 0d |  |  | 32h |
| 22 | 1.2.1 | 教育机构导航页面 | 1d? | 2012-05-08 | 2012-05-08 |  | 7.6d | 0d | start no earlier than 2012-05-08 | 朱林 | 8h |
| 23 | 1.2.2 | 驻站申请页面 | 1d? | 2012-05-09 | 2012-05-09 | 22 | 7.6d | 0d | start no earlier than 2012-05-09 | 朱林 | 8h |
| 24 | 1.2.3 | 教育机构审核页面 | 1d? | 2012-05-10 | 2012-05-10 | 23 | 7.6d | 0d | start no earlier than 2012-05-10 | 朱林 | 8h |
| 25 | 1.2.4 | 教育机构查询结果展示 | 1d? | 2012-05-11 | 2012-05-11 | 24 | 7.6d |  | start no earlier than 2012-05-11 | 朱林 | 8h |
| 26 | 1.3 | 教育机构首页 | 1d? | 2012-05-14 | 2012-05-14 | 21 | 7.6d | 0d | start no earlier than 2012-05-14 | 朱林 | 8h |

Notes:
- 26: 由论坛版块改造，访问关联论坛版块时访问该教育机构首页

| ID | WBS | Task | Type | Duration | Start | Finish | Predecessors | Total slack | Free slack | Constraint | Resources | Work |
| --- | --- | --- | --- | --- | --- | --- | --- | --- | --- | --- | --- | --- |
| 27 | 1.4 | **机构设置** |  | 6d? | 2012-05-15 | 2012-05-22 | 26 | 7.6d |  |  | 朱林 | 96h |
| 28 | 1.4.1 | 课程设置 |  | 1d? | 2012-05-15 | 2012-05-15 |  | 7.6d | 0d |  | 朱林 | 8h |
| 29 | 1.4.2 | 班级设置 |  | 1d? | 2012-05-16 | 2012-05-16 | 28 | 7.6d | 0d |  | 朱林 | 8h |
| 30 | 1.4.3 | 家长审核 |  | 1d? | 2012-05-17 | 2012-05-17 | 29 | 21.6d | 0d |  | 朱林 | 8h |
| 31 | 1.4.4 | 学费类型 |  | 1d? | 2012-05-18 | 2012-05-18 | 30 | 21.6d | 0d |  | 朱林 | 8h |
| 32 | 1.4.5 | 权限管理 |  | 1d? | 2012-05-21 | 2012-05-21 | 31 | 21.6d | 0d |  | 朱林 | 8h |
| 33 | 1.4.6 | 文章分类 |  | 1d? | 2012-05-22 | 2012-05-22 | 32 | 21.6d |  |  | 朱林 | 8h |
| 34 | 1.5 | **教学教务** |  | 15d? | 2012-05-07 | 2012-05-25 |  | 7.6d | 0d |  | 朱林 | 176h |
| 35 | 1.5.1 | 讨论区模板 |  | 1d? | 2012-05-17 | 2012-05-17 | 29 | 7.6d | 0d |  | 朱林 | 8h |
| 36 | 1.5.2 | 学生档案管理 |  | 1d? | 2012-05-18 | 2012-05-18 | 35 | 7.6d | 0d |  | 朱林 | 8h |
| 37 | 1.5.3 | 教师管理 |  | 1d? | 2012-05-21 | 2012-05-21 | 36 | 7.6d | 0d |  | 朱林 | 8h |
| 38 | 1.5.4 | 教案模板 |  | 1d? | 2012-05-22 | 2012-05-22 | 37 | 7.6d | 0d |  | 朱林 | 8h |
| 39 | 1.5.5 | 教学笔记模板 |  | 1d? | 2012-05-23 | 2012-05-23 | 38 | 7.6d | 0d |  | 朱林 | 8h |
| 40 | 1.5.6 | 学生考勤管理 |  | 1d? | 2012-05-24 | 2012-05-24 | 39 | 7.6d | 0d |  | 朱林 | 8h |
| 41 | 1.5.7 | 学费管理 |  | 1d? | 2012-05-25 | 2012-05-25 | 40 | 7.6d |  |  | 朱林 | 8h |
| 42 | 1.5.8 | 学业评估 | milestone | 0d? | 2012-05-07 | 2012-05-07 |  | 22.6d |  |  | 朱林 |  |
| 43 | 1.6 | **家校沟通** |  | 4d? | 2012-05-25 | 2012-05-31 | 34 | 7.6d | 0d |  | 朱林 | 88h |
| 44 | 1.6.1 | 家长申请 |  | 1d? | 2012-05-28 | 2012-05-28 |  | 7.6d | 0d | start no earlier than 2012-05-15 | 朱林 | 8h |
| 45 | 1.6.2 | **班级空间** |  | 3d? | 2012-05-29 | 2012-05-31 | 44 | 7.6d |  |  | 朱林 | 48h |
| 46 | 1.6.2.1 | 群组模板改进 |  | 1d? | 2012-05-29 | 2012-05-29 |  | 7.6d | 0d |  | 朱林 | 8h |
| 47 | 1.6.2.2 | 考勤登记 |  | 1d? | 2012-05-30 | 2012-05-30 | 46 | 7.6d | 0d |  | 朱林 | 8h |
| 48 | 1.6.2.3 | 通讯录 |  | 1d? | 2012-05-31 | 2012-05-31 | 47 | 7.6d |  |  | 朱林 | 8h |
| 49 | 1.6.3 | 家委会 | milestone | 0d | 2012-05-25 | 2012-05-25 |  | 11.6d |  |  | 朱林 |  |
| 50 | 1.7 | **教育机构展示** |  | 7d? | 2012-06-01 | 2012-06-11 | 43 | 7.6d |  |  | 朱林 | 136h |
| 51 | 1.7.1 | 学校概况 |  | 1d? | 2012-06-01 | 2012-06-01 |  | 7.6d | 0d |  | 朱林 | 8h |
| 52 | 1.7.2 | 文章展示模板 |  | 1d? | 2012-06-04 | 2012-06-04 | 51 | 7.6d | 0d |  | 朱林 | 8h |

Notes:
- 42: 暂时不做

| ID | WBS | Task | Duration | Start | Finish | Predecessors | Total slack | Free slack | Resources | Work |
| --- | --- | --- | --- | --- | --- | --- | --- | --- | --- | --- |
| 53 | 1.7.3 | **招生培训** | 3d? | 2012-06-05 | 2012-06-07 | 52 | 7.6d |  | 朱林 | 48h |
| 54 | 1.7.3.1 | 招生培训信息发布管理 | 1d? | 2012-06-05 | 2012-06-05 |  | 7.6d | 0d | 朱林 | 8h |
| 55 | 1.7.3.2 | 招生培训信息展示 | 1d? | 2012-06-06 | 2012-06-06 | 54 | 7.6d | 0d | 朱林 | 8h |
| 56 | 1.7.3.3 | 招生报名 | 1d? | 2012-06-07 | 2012-06-07 | 55 | 7.6d | 0d | 朱林 | 8h |
| 57 | 1.7.4 | 校历 | 1d? | 2012-06-08 | 2012-06-08 | 56 | 7.6d | 0d | 朱林 | 8h |
| 58 | 1.7.5 | 食谱 | 1d? | 2012-06-11 | 2012-06-11 | 57 | 7.6d |  | 朱林 | 8h |
| 59 | 2 | **discuz改进** | 24d? | 2012-05-18 | 2012-06-21 | 2 | 0d |  | 杨代盟 | 568h |
| 60 | 2.1 | 首页 | 1d? | 2012-05-18 | 2012-05-21 |  | 0d |  | 杨代盟 | 8h |
| 61 | 2.2 | **消息/通知** | 2d? | 2012-05-21 | 2012-05-23 | 60 | 0d |  | 杨代盟 | 32h |
| 62 | 2.2.1 | 邮件支持 | 1d? | 2012-05-21 | 2012-05-22 |  | 0d |  | 杨代盟 | 8h |
| 63 | 2.2.2 | 手机短信支持 | 1d? | 2012-05-22 | 2012-05-23 | 62 | 0d |  | 杨代盟 | 8h |
| 64 | 2.3 | **群组** | 3d? | 2012-05-23 | 2012-05-28 | 61 | 0d |  | 杨代盟 | 48h |
| 65 | 2.3.1 | VIP会员支持 | 1d? | 2012-05-23 | 2012-05-24 |  | 0d |  | 杨代盟 | 8h |
| 66 | 2.3.2 | 通讯录支持 | 1d? | 2012-05-24 | 2012-05-25 | 65 | 0d |  | 杨代盟 | 8h |
| 67 | 2.3.3 | 群主发送通知 | 1d? | 2012-05-25 | 2012-05-28 | 66 | 0d |  | 杨代盟 | 8h |
| 68 | 2.4 | **我的专辑（淘贴改进）** | 6d? | 2012-05-28 | 2012-06-05 | 64 | 0d |  | 杨代盟 | 96h |
| 69 | 2.4.1 | 合并淘贴、分享和收藏 | 1d? | 2012-05-28 | 2012-05-29 |  | 0d |  | 杨代盟 | 8h |
| 70 | 2.4.2 | 专辑排序，不分类 | 1d? | 2012-05-29 | 2012-05-30 | 69 | 0d |  | 杨代盟 | 8h |
| 71 | 2.4.3 | 分私密专辑和公开专辑 | 1d? | 2012-05-30 | 2012-05-31 | 70 | 0d |  | 杨代盟 | 8h |
| 72 | 2.4.4 | 贴子、文章、相册中增加引用其的专辑链接 | 1d? | 2012-05-31 | 2012-06-01 | 71 | 0d |  | 杨代盟 | 8h |
| 73 | 2.4.5 | 分享升级 | 1d? | 2012-06-01 | 2012-06-04 | 72 | 0d |  | 杨代盟 | 8h |
| 74 | 2.4.6 | 收藏升级 | 1d? | 2012-06-04 | 2012-06-05 | 73 | 0d |  | 杨代盟 | 8h |
| 75 | 2.5 | **新浪微博插件改进** | 2d? | 2012-06-05 | 2012-06-07 | 68 | 0d |  | 杨代盟 | 32h |
| 76 | 2.5.1 | 论坛回贴以转发方式体现在微薄 | 1d? | 2012-06-05 | 2012-06-06 |  | 0d |  | 杨代盟 | 8h |
| 77 | 2.5.2 | 微薄评论映射到对应论坛用户 | 1d? | 2012-06-06 | 2012-06-07 | 76 | 0d |  | 杨代盟 | 8h |

Notes:
- 60: 关键改进： / 1、缩减头部，搜索、导航条 、DIV条合并到顶部，采用浮动式，类似于新浪微薄 / 2、以Home.php为首页进行改造：左边为快捷功能入口和版块列表，中间为我的关注、随便看看和好友动态（登录用户默认显示我的关注页签，游客不显示我的关注和好友动态页签），加快速发贴功能，去掉记录框 / 3、右边网站内容和用户推荐区 / 4、底部悬浮式快捷菜单，发贴、传图、写日志、分享（知识收集）、我的班级、我的自定义菜单
- 65: 普通会员不能查看和使用通讯录
- 66: 使用用户的联系方式，用户可设置其联系方式是否在群组中公开，可设置在群组中的别名
- 67: 支持全部发送、VIP会员发送、普通会员发送、或选择部分会员发送，发送方式支持站内短信、邮件、手机短信3种方式。
- 68: 一个专辑中可以包含：贴子、文章、日志、相册、图片、专辑、回复、外部连接
- 73: 分享升级到一个默认专辑：XXX的分享
- 74: 收藏升级到一个默认专辑：XXX的收藏，为私密专辑

| ID | WBS | Task | Duration | Start | Finish | Predecessors | Total slack | Resources | Work |
| --- | --- | --- | --- | --- | --- | --- | --- | --- | --- |
| 78 | 2.6 | **关注/动态/提醒** | 4d? | 2012-06-07 | 2012-06-13 | 75 | 0d | 杨代盟 | 64h |
| 79 | 2.6.1 | 版块关注 | 1d? | 2012-06-07 | 2012-06-08 |  | 0d | 杨代盟 | 8h |
| 80 | 2.6.2 | 群组关注 | 1d? | 2012-06-08 | 2012-06-11 | 79 | 0d | 杨代盟 | 8h |
| 81 | 2.6.3 | 主题关注 | 1d? | 2012-06-11 | 2012-06-12 | 80 | 0d | 杨代盟 | 8h |
| 82 | 2.6.4 | 加好友/加关注不发送动态 | 1d? | 2012-06-12 | 2012-06-13 | 81 | 0d | 杨代盟 | 8h |
| 83 | 2.7 | **个人中心** | 6d? | 2012-06-13 | 2012-06-21 | 78 | 0d | 杨代盟 | 96h |
| 84 | 2.7.1 | 增加我的关注模块 | 1d? | 2012-06-13 | 2012-06-14 |  | 0d | 杨代盟 | 8h |
| 85 | 2.7.2 | 增加我的粉丝模块 | 1d? | 2012-06-14 | 2012-06-15 | 84 | 0d | 杨代盟 | 8h |
| 86 | 2.7.3 | 动态模块支持所有类型的内容 | 1d? | 2012-06-15 | 2012-06-18 | 85 | 0d | 杨代盟 | 8h |
| 87 | 2.7.4 | 增加我的专辑模块和页签 | 1d? | 2012-06-18 | 2012-06-19 | 86 | 0d | 杨代盟 | 8h |
| 88 | 2.7.5 | 主题和回复支持按日期范围查找 | 1d? | 2012-06-19 | 2012-06-20 | 87 | 0d | 杨代盟 | 8h |
| 89 | 2.7.6 | 个人中心首页默认样式改进 | 1d? | 2012-06-20 | 2012-06-21 | 88 | 0d | 杨代盟 | 8h |

Notes:
- 79: 关注版块后当版块有新内容时发送提醒，可设置哪些用户组才可以关注版块
- 80: 会员加入群组后，默认关注群组，可取消
- 81: 当有新回复时提醒关注的人员
- 88: 为防止效率问题，仅限本人
- 89: 参考新浪微薄
